# SR1421

Schedule from a web Gantt chart, 2024-08-21 to 2024-09-26.
Saturdays and Sundays are off

## Schedule

| ID | WBS | Task | Duration | Start | Finish | Predecessors | Complete | inPeople | Status |
| --- | --- | --- | --- | --- | --- | --- | --- | --- | --- |
| 2 | 1 | **SR1420** | 18d | 2024-08-21 | 2024-09-13 |  | 32% |  |  |
| 3 | 1.1 | **需求/设计** | 10d | 2024-08-21 | 2024-09-03 |  | 70% | 张帅 |  |
| 4 | 1.1.1 | 研发需求 | 3d | 2024-08-21 | 2024-08-23 |  | 100% |  |  |
| 5 | 1.1.2 | UI/UE | 4d | 2024-08-26 | 2024-08-29 | 4 | 100% |  | waiting |
| 6 | 1.1.3 | 需求规格书 | 3d | 2024-08-30 | 2024-09-03 | 5 |  |  | waiting |
| 7 | 1.2 | **软件开发** | 7d | 2024-08-29 | 2024-09-06 |  | 29% | 朱海丰 |  |
| 8 | 1.2.1 | 技术方案 | 2d | 2024-08-29 | 2024-08-30 |  | 100% |  |  |
| 9 | 1.2.2 | 设计规格书 | 1d | 2024-09-02 | 2024-09-02 | 8 |  |  | waiting |
| 10 | 1.2.3 | 代码实现 | 3d | 2024-09-03 | 2024-09-05 | 9 |  |  | waiting |
| 11 | 1.2.4 | 单元测试 | 1d | 2024-09-06 | 2024-09-06 | 10 |  |  | waiting |
| 12 | 1.3 | **软件集成** | 7d | 2024-09-02 | 2024-09-10 |  |  | 刘鑫蕊 |  |
| 13 | 1.3.1 | 集成计划 | 1d | 2024-09-02 | 2024-09-02 | 8 |  |  | waiting |
| 14 | 1.3.2 | 集成测试 | 2d | 2024-09-06 | 2024-09-09 | 10 |  |  | waiting |
| 15 | 1.3.3 | 集成报告 | 1d | 2024-09-10 | 2024-09-10 | 14 |  |  | waiting |
| 16 | 1.4 | **软件测试** | 10d | 2024-09-02 | 2024-09-13 |  |  | 靳争 |  |
| 17 | 1.4.1 | 测试计划 | 1d | 2024-09-02 | 2024-09-02 | 8 |  |  | waiting |
| 18 | 1.4.2 | 软件测试 | 3d | 2024-09-10 | 2024-09-12 | 14 |  |  | waiting |
| 19 | 1.4.3 | 测试报告 | 1d | 2024-09-13 | 2024-09-13 | 18 |  |  | waiting |
| 20 | 1.4.4 | 901 | 1d | 2024-09-13 | 2024-09-13 | 18 |  |  | waiting |
| 21 | 1.4.5 | RHF | 1d | 2024-09-13 | 2024-09-13 | 18 |  |  | waiting |
| 22 | 2 | **SR1420-i** | 19d | 2024-09-02 | 2024-09-26 |  |  |  |  |
| 23 | 2.1 | **软件开发** | 6d | 2024-09-02 | 2024-09-09 |  |  | 曹文明 |  |
| 24 | 2.1.1 | 设计规格书 | 1d | 2024-09-02 | 2024-09-02 |  |  |  |  |
| 25 | 2.1.2 | 代码实现 | 4d | 2024-09-03 | 2024-09-06 | 24 |  |  | waiting |
| 26 | 2.1.3 | 单元测试 | 1d | 2024-09-09 | 2024-09-09 | 25 |  |  | waiting |

| ID | WBS | Task | Duration | Start | Finish | Predecessors | inPeople | Status |
| --- | --- | --- | --- | --- | --- | --- | --- | --- |
| 27 | 2.2 | **软件集成** | 4d | 2024-09-16 | 2024-09-19 |  | 刘鑫蕊 |  |
| 28 | 2.2.1 | 集成计划 | 1d | 2024-09-16 | 2024-09-16 |  |  |  |
| 29 | 2.2.2 | 集成测试 | 2d | 2024-09-17 | 2024-09-18 | 28 |  | waiting |
| 30 | 2.2.3 | 集成报告 | 1d | 2024-09-19 | 2024-09-19 | 29 |  | waiting |
| 31 | 2.3 | **软件测试** | 9d | 2024-09-16 | 2024-09-26 |  | 靳争 |  |
| 32 | 2.3.1 | 测试计划 | 1d | 2024-09-16 | 2024-09-16 |  |  |  |
| 33 | 2.3.2 | 软件测试 | 3d | 2024-09-19 | 2024-09-23 | 29 |  | waiting |
| 34 | 2.3.3 | 测试报告 | 1d | 2024-09-24 | 2024-09-24 | 33 |  | waiting |
| 35 | 2.3.4 | 901 | 1d | 2024-09-25 | 2024-09-25 | 34 |  | waiting |
| 36 | 2.3.5 | RHF | 1d | 2024-09-26 | 2024-09-26 | 35 |  | waiting |
